# 2school-2gether

Schedule from MS Project, 2021-05-05 to 2023-04-29, costs in €.
plan projekta
Elektrotehnički fakultet, Univerzitet u Beogradu

## Calendars

- Standard: Mon-Fri 08:00-12:00, 13:00-17:00; Sat-Sun off. Exceptions (off unless hours are given): 2021-11-11 (Dan primirja u 1. Svetskom ratu), 2022-01-03 (Nova godina), 2022-01-07 (Božić), 2022-02-15 to 2022-02-16 (Dan državnosti), 2022-04-22 (Veliki petak), 2022-04-25 (Uskrs), 2022-05-02 (Dan rada), 2022-11-11 (Dan primirja u 1. Svetskom ratu), 2023-01-02 to 2023-01-03 (Nova godina), 2023-01-09 (Božić), 2023-02-15 to 2023-02-16 (Dan državnosti), 2023-04-14 (Veliki petak), 2023-04-17 (Uskrs).

## Resources

| Resource | Unit | Rate |
| --- | --- | --- |
| FON1 |  | 9.38 |
| Server | komad | 2000 |
| PC | komad | 1300 |
| MODEM | komad | 100 |
| Licenca za "Google Maps" |  |  |
| Licenca za "TomTom" |  |  |
| FON6 |  | 9.38 |
| FON4 |  | 9.38 |
| FON3 |  | 9.38 |
| FON2 |  | 9.38 |
| ETF1 |  | 10.31 |
| ETF2 |  | 10.31 |
| ETF3 |  | 10.31 |
| ETF4 |  | 10.31 |
| ETF5 |  | 10.31 |
| ETF6 |  | 10.31 |
| ETF7 |  | 10.31 |
| ETF8 |  | 10.31 |
| ETF9 |  | 10.31 |
| ETF10 |  | 10.31 |
| ETF11 |  | 10.31 |
| ETF12 |  | 10.31 |
| ETF13 |  | 10.31 |
| ETF14 |  | 10.31 |
| ETF15 |  | 10.31 |
| ETF16 |  | 10.31 |
| ETF17 |  | 10.31 |
| ETF18 |  | 10.31 |
| ETF19 |  | 10.31 |
| ETF20 |  | 10.31 |
| ETF21 |  | 10.31 |
| ETF22 |  | 10.31 |
| ETF23 |  | 10.31 |
| ETF24 |  | 10.31 |
| TEL1 |  | 6.25 |
| TEL2 |  | 6.25 |
| TEL3 |  | 6.25 |
| TEL4 |  | 6.25 |
| TEL5 |  | 6.25 |
| TEL6 |  | 6.25 |
| TEL7 |  | 6.25 |
| Avio karta >1500km |  |  |
| Avio karta 1000-1500 km |  |  |
| ETF26 |  | 10.31 |
| ETF25 |  | 10.31 |
| MSG1 |  | 18.75 |
| MSG2 |  | 18.75 |
| MSG3 |  | 18.75 |
| MSG4 |  | 18.75 |
| MSG5 |  | 18.75 |
| MSG6 |  | 18.75 |
| GOOGLE1 |  | 25 |
| GOOGLE2 |  | 25 |
| GOOGLE3 |  | 25 |
| GOOGLE4 |  | 25 |
| GOOGLE5 |  | 25 |
| TOM1 |  | 23.75 |
| TOM2 |  | 23.75 |
| TOM3 |  | 23.75 |
| TOM4 |  | 23.75 |
| TOM5 |  | 23.75 |
| MPN1 |  | 9.38 |
| MPN2 |  | 9.38 |
| FON5 |  | 9.38 |
| MPN3 |  | 9.38 |
| ETF27 |  | 10.31 |

## Schedule

| ID | WBS | Task | Type | Duration | Start | Finish | Predecessors | Total slack | Constraint | Resources | Work | Cost |
| --- | --- | --- | --- | --- | --- | --- | --- | --- | --- | --- | --- | --- |
| 1 | 1 | **Planiranje projekta** |  | 18d | 2021-05-05 | 2021-05-31 |  | 0d |  |  | 720h | 6,753.6 |
| 2 | 1.1 | Definisanje I procena količine neophodnodnih resursa | manual | 4d | 2021-05-05 | 2021-05-11 |  |  |  | FON1; FON2; FON3; FON4; FON5 | 160h | 1,500.8 |
| 3 | 1.2 | Pravljenje projektnog rasporeda | manual | 3d | 2021-05-11 | 2021-05-14 | 2 |  |  | FON1; FON2; FON3; FON4; FON5 | 120h | 1,125.6 |
| 4 | 1.3 | Podela posla | manual | 5d | 2021-05-14 | 2021-05-21 | 3 |  |  | FON1; FON2; FON3; FON4; FON5 | 200h | 1,876 |
| 5 | 1.4 | Definisanje planova rizika I budžeta I pisanje POS dokumenta | manual | 6d | 2021-05-21 | 2021-05-31 | 4 |  |  | FON1; FON2; FON3; FON4; FON5 | 240h | 2,251.2 |
| 6 | 2 | **Dizajniranje arhitekture sistema** |  | 23d | 2021-05-31 | 2021-07-01 |  | 0d |  |  | 2206.08h | 22,744.68 |
| 7 | 2.1 | Pisanje scenarija slučajeva upotreba | manual | 5d | 2021-05-31 | 2021-06-07 |  |  |  | ETF1; ETF2; ETF3; ETF4; ETF5; ETF6; ETF7; ETF8; ETF9; ETF10; ETF11; ETF12 | 480h | 4,948.8 |
| 8 | 2.2 | Crtanje UML dijagrama | manual | 4d | 2021-06-07 | 2021-06-11 | 7 |  |  | ETF1; ETF2; ETF3; ETF4; ETF5; ETF6; ETF7; ETF8; ETF9; ETF10; ETF11; ETF12 | 384h | 3,959.04 |
| 9 | 2.3 | Šematski prikaz klijent-server arhitekture | manual | 6d | 2021-06-11 | 2021-06-21 | 8 |  | start no earlier than 2021-06-11 | ETF1; ETF2; ETF3; ETF4; ETF5; ETF6; ETF7; ETF8; ETF9; ETF10; ETF11; ETF12 | 576h | 5,938.56 |
| 10 | 2.4 | Pravljenje ER modela baze | manual | 3d | 2021-06-21 | 2021-06-24 |  |  |  | ETF1 [66%]; ETF2 [66%]; ETF3 [66%]; ETF4 [66%]; ETF5 [66%]; ETF6 [66%]; ETF7 [66%]; ETF8 [66%]; ETF9 [66%]; ETF10 [66%]; ETF11 [66%]; ETF12 [66%] | 190.08h | 1,959.72 |
| 11 | 2.5 | Pravljenje softverskog prototipa | manual | 8d | 2021-06-21 | 2021-07-01 |  |  |  | ETF13 [75%]; ETF14 [75%]; ETF15 [75%]; ETF16 [75%]; ETF17 [75%]; ETF18 [75%]; ETF19 [75%]; ETF20 [75%]; ETF21 [75%]; ETF22 [75%]; ETF23 [75%]; ETF24 [75%] | 576h | 5,938.56 |
| 12 | 3 | M1:Prototip aplikacije | milestone | 0d | 2021-07-01 | 2021-07-01 | 6 | 460.88d |  |  |  |  |
| 13 | 4 | **Postavljanje neophodne infrastrukture** |  | 21d | 2021-07-01 | 2021-07-30 |  | 0d |  |  | 1432h | 35,359.6 |
| 14 | 4.1 | Ugrađivanje serverske infrastrukture | manual | 10d | 2021-07-01 | 2021-07-15 |  |  |  | ETF1; Server [6 komad]; TEL1; TEL2; TEL3; TEL4; TEL5; TEL6; TEL7; Avio karta >1500km [0.1%]; Avio karta 1000-1500 km [0.1%] | 640h | 18,124.8 |
| 15 | 4.2 | Ugrađivanje mrežnih uređaja | manual | 7d | 2021-07-15 | 2021-07-26 |  |  |  | ETF1 [50%]; MODEM [10 komad]; TEL1 [50%]; TEL2 [50%]; TEL3 [50%]; TEL4 [50%]; TEL5 [50%]; TEL6 [50%]; TEL7 [50%]; Avio karta >1500km [0.1%]; Avio karta 1000-1500 km [0.1%] | 224h | 4,313.68 |
| 16 | 4.3 | Ugrađivanje ostalih neophodnih komponenti | manual | 7d | 2021-07-15 | 2021-07-26 |  |  |  | ETF1 [50%]; TEL1 [50%]; TEL2 [50%]; TEL3 [50%]; TEL4 [50%]; TEL5 [50%]; TEL6 [50%]; TEL7 [50%]; PC [4 komad]; Avio karta >1500km [0.1%]; Avio karta 1000-1500 km [0.1%]; ETF24 | 280h | 9,091.04 |
| 17 | 4.4 | Nabavka ključeva za korišćenje API | manual | 4d | 2021-07-26 | 2021-07-30 |  |  |  | ETF1; TEL1; TEL2; TEL3; TEL4; TEL5; TEL6; TEL7; Avio karta >1500km [0.1%]; Avio karta 1000-1500 km [0.1%]; FON2 | 288h | 3,830.08 |
| 18 | 5 | **Razvoj veb aplikacije** |  | 188d | 2021-08-02 | 2022-05-03 |  | 0d |  |  | 5416h | 82,886.64 |
| 19 | 5.1 | **Implementacija serverskog dela** |  | 188d | 2021-08-02 | 2022-05-03 |  | 0d |  |  | 2040h | 34,556.24 |
| 20 | 5.1.1 | Realizovanje modula za prijavu I registraciju | manual | 66d | 2021-08-02 | 2021-11-02 |  |  |  | ETF1 [33%]; ETF2 [33%]; ETF3 [33%]; ETF4 [1%] | 528h | 5,443.68 |
| 21 | 5.1.2 | Realizovanje modula za komunikaciju korisnika | manual | 67d | 2021-11-02 | 2022-02-08 |  |  |  | MSG1; ETF1 [33%]; ETF2 [33%]; ETF3 [33%]; ETF4 [1%]; Avio karta 1000-1500 km [0.1%]; PC [2 komad] | 1072h | 24,576.16 |
| 22 | 5.1.3 | Realizovanje modula za rad sa terminima vožnje | manual | 43d | 2022-02-08 | 2022-04-12 |  |  |  | ETF1 [33%]; ETF2 [33%]; ETF3 [33%]; ETF4 [1%] | 344h | 3,546.64 |
| 23 | 5.1.4 | Realizovanje modula za administriranje | manual | 12d | 2022-04-12 | 2022-05-03 |  |  | start no earlier than 2022-04-12 | ETF1 [33%]; ETF2 [33%]; ETF3 [33%]; ETF4 [1%] | 96h | 989.76 |
| 24 | 5.2 | **Implementacija klijentskog dela** |  | 188d | 2021-08-02 | 2022-05-03 |  | 0d |  |  | 2040h | 34,556.24 |
| 25 | 5.2.1 | Realizovanje modula za prijavu I registraciju | manual | 66d | 2021-08-02 | 2021-11-02 |  |  |  | ETF1 [33%]; ETF2 [33%]; ETF3 [33%]; ETF4 [1%] | 528h | 5,443.68 |
| 26 | 5.2.2 | Realizovanje modula za komunikaciju korisnika | manual | 67d | 2021-11-02 | 2022-02-08 |  |  |  | MSG2; ETF1 [33%]; ETF2 [33%]; ETF3 [33%]; ETF4 [1%]; Avio karta 1000-1500 km [0.1%]; PC [2 komad] | 1072h | 24,576.16 |
| 27 | 5.2.3 | Realizovanje modula za rad sa terminima vožnje | manual | 43d | 2022-02-08 | 2022-04-12 |  |  |  | ETF1 [33%]; ETF2 [33%]; ETF3 [33%]; ETF4 [1%] | 344h | 3,546.64 |
| 28 | 5.2.4 | Realizovanje modula za administriranje | manual | 12d | 2022-04-12 | 2022-05-03 |  |  |  | ETF1 [33%]; ETF2 [33%]; ETF3 [33%]; ETF4 [1%] | 96h | 989.76 |
| 29 | 5.3 | Priprema test plana I pripremanje testova (Test driven development) |  | 167d | 2021-08-02 | 2022-03-30 |  | 271.38d | start no earlier than 2021-08-02 | ETF1 [33%]; ETF2 [33%]; ETF3 [33%]; ETF4 [1%] | 1336h | 13,774.16 |
| 30 | 6 | M2: Modul za komunikaciju korisnika | milestone | 0d | 2022-02-08 | 2022-02-08 | 21, 26 | 305.88d |  |  |  |  |

| ID | WBS | Task | Type | Duration | Start | Finish | Predecessors | Total slack | Free slack | Resources | Work | Cost |
| --- | --- | --- | --- | --- | --- | --- | --- | --- | --- | --- | --- | --- |
| 31 | 7 | **Povezivanje sa "Google Maps" I "Tom Tom" bazama podataka** |  | 43d | 2022-05-03 | 2022-07-01 |  | 0d |  |  | 2560h | 79,822.8 |
| 32 | 7.1 | Uspešno povezivanje sa API-em "Google Maps" | manual | 21d | 2022-05-03 | 2022-06-01 |  |  |  | GOOGLE1; GOOGLE2; GOOGLE3; GOOGLE4; GOOGLE5; Avio karta >1500km [0.1%]; PC [4 komad]; Licenca za "Google Maps" [0.1%] | 840h | 37,200 |
| 33 | 7.2 | Uspešno povezivanje sa API-em "TomTom" | manual | 21d | 2022-05-03 | 2022-06-01 |  |  |  | TOM1; TOM2; TOM3; TOM4; TOM5; Avio karta 1000-1500 km [0.1%]; PC [4 komad]; Licenca za "TomTom" [0.1%] | 840h | 33,550 |
| 34 | 7.3 | Implementiranje modula za rad sa GPS sistemom | manual | 22d | 2022-06-01 | 2022-07-01 |  |  |  | ETF1; ETF2; ETF3; ETF4; ETF5 | 880h | 9,072.8 |
| 35 | 8 | M3: Modul za rad sa GPS sistemom | milestone | 0d | 2022-07-01 | 2022-07-01 | 34 | 207.88d |  |  |  |  |
| 36 | 9 | **Adaptiranje aplikacije za mobilne uređaje (Android platformu)** |  | 128d | 2022-07-01 | 2022-12-29 |  | 0d |  |  | 3072h | 31,672.32 |
| 37 | 9.1 | Adaptiranje serverskog dela za mobilne uređaje | manual | 128d | 2022-07-01 | 2022-12-29 |  |  |  | ETF1 | 1024h | 10,557.44 |
| 38 | 9.2 | Adaptiranje klijentskog dela za mobilne uređaje | manual | 128d | 2022-07-01 | 2022-12-29 |  |  |  | ETF2 | 1024h | 10,557.44 |
| 39 | 9.3 | Adaptiranje baze podataka za rad na Android uređajima | manual | 128d | 2022-07-01 | 2022-12-29 |  |  |  | ETF3 | 1024h | 10,557.44 |
| 40 | 10 | M4: Implementirana verzija sistema za Android | milestone | 0d | 2022-12-29 | 2022-12-29 | 36 | 79.88d |  |  |  |  |
| 41 | 11 | **Integracija I testiranje sistema** |  | 37d | 2023-01-04 | 2023-03-01 |  | 0d |  |  | 2184h | 22,517.04 |
| 42 | 11.1 | Integracija sistema | manual | 37d | 2023-01-04 | 2023-03-01 |  |  |  | ETF1; ETF2; ETF3 | 888h | 9,155.28 |
| 43 | 11.2 | Izvršavanje jediničnih testova | manual | 12d | 2023-01-04 | 2023-01-23 |  |  |  | ETF4; ETF5; ETF6 | 288h | 2,969.28 |
| 44 | 11.3 | Izvršavanje UI testova | manual | 12d | 2023-01-23 | 2023-02-08 | 43 |  |  | ETF4; ETF5; ETF6 | 288h | 2,969.28 |
| 45 | 11.4 | Izvršavanje sistemskih testova | manual | 12d | 2023-02-08 | 2023-02-28 | 44 |  |  | ETF4; ETF5; ETF6 | 288h | 2,969.28 |
| 46 | 11.5 | Integraciono testiranje | manual | 12d | 2023-01-23 | 2023-02-08 | 43 |  |  | ETF7 [50%]; ETF8 [50%]; ETF9 [50%]; ETF10 [50%]; ETF11 [50%]; ETF12 [50%]; ETF13 [50%]; ETF14 [50%]; ETF15 [50%] | 432h | 4,453.92 |
| 47 | 12 | **Evaluacija I disiminacija** |  | 40d | 2023-03-01 | 2023-04-28 |  | 0d |  |  | 2360h | 23,721.52 |
| 48 | 12.1 | Pregled pravne I projektne dokumentacije | manual | 11d | 2023-03-01 | 2023-03-16 |  |  |  | MPN1; MPN2 | 176h | 1,650.88 |
| 49 | 12.2 | Testiranje performansi I eventualne ispravke | manual | 31d | 2023-03-01 | 2023-04-13 |  |  |  | ETF1; ETF2; ETF3; ETF4; ETF5; ETF6 | 1488h | 15,341.28 |
| 50 | 12.3 | Analiziranje rezultata | manual | 3d | 2023-04-13 | 2023-04-20 | 49 |  |  | MPN1; MPN2; FON1; FON2; FON3; FON4; ETF1; ETF2; ETF3 | 216h | 2,093.04 |
| 51 | 12.4 | Reklamiranje proizvoda (marketing) | manual | 6d | 2023-04-20 | 2023-04-28 | 50 |  |  | FON1; FON2; FON3; FON4; FON5 | 240h | 2,251.2 |
| 52 | 12.5 | Završetak projekta | manual | 6d | 2023-04-20 | 2023-04-28 | 50 |  |  | MPN1; MPN2; ETF1; ETF2; ETF3 | 240h | 2,385.12 |
| 53 | 13 | **Upravljanje projektom** |  | 502d | 2021-05-05 | 2023-04-29 |  |  |  |  | 96h | 260,930.24 |
| 54 | 13.1 | Sastanak pred fazu Dizajniranja | manual | 4h | 2021-05-31 | 2021-05-31 | 1 |  |  | Avio karta >1500km [0.1%]; Avio karta 1000-1500 km [0.1%]; PC [1 komad]; ETF27; FON6; MPN3 | 12h | 32,616.28 |
| 55 | 13.2 | Sastanak pred fazu Postavljanja neophodne infrastrukture | manual | 4h | 2021-07-01 | 2021-07-01 | 6 |  |  | Avio karta >1500km [0.1%]; Avio karta 1000-1500 km [0.1%]; PC [1 komad]; ETF27; FON6; MPN3 | 12h | 32,616.28 |
| 56 | 13.3 | Sastanak pred fazu razvoja veb aplikacije | manual | 4h | 2021-07-30 | 2021-07-30 | 13 |  |  | Avio karta >1500km [0.1%]; Avio karta 1000-1500 km [0.1%]; PC [1 komad]; ETF27; FON6; MPN3 | 12h | 32,616.28 |
| 57 | 13.4 | Sastanak tačno na polovini faze razvoja I implementacije | manual | 4h | 2022-02-08 | 2022-02-08 | 21 |  |  | Avio karta >1500km [0.1%]; Avio karta 1000-1500 km [0.1%]; PC [1 komad]; ETF27; FON6; MPN3 | 12h | 32,616.28 |
| 58 | 13.5 | Sastanak pred fazu Povezivanja sa bazama podataka | manual | 4h | 2022-05-03 | 2022-05-03 | 18 |  |  | Avio karta >1500km [0.1%]; Avio karta 1000-1500 km [0.1%]; PC [1 komad]; ETF27; FON6; MPN3 | 12h | 32,616.28 |
| 59 | 13.6 | Sastanak pred fazu Adaptacije aplikacije za Android | manual | 4h | 2022-07-01 | 2022-07-01 | 31 |  |  | Avio karta >1500km [0.1%]; Avio karta 1000-1500 km [0.1%]; PC [1 komad]; ETF27; FON6; MPN3 | 12h | 32,616.28 |
| 60 | 13.7 | Sastanak pred fazu Integracije I testiranja | manual | 4h | 2022-12-29 | 2022-12-29 | 36 |  |  | Avio karta >1500km [0.1%]; Avio karta 1000-1500 km [0.1%]; PC [1 komad]; ETF27; FON6; MPN3 | 12h | 32,616.28 |
| 61 | 13.8 | Finalni sastanak I revizija | manual | 4h | 2023-04-28 | 2023-04-28 | 63 |  |  | Avio karta >1500km [0.1%]; Avio karta 1000-1500 km [0.1%]; PC [1 komad]; ETF27; FON6; MPN3 | 12h | 32,616.28 |
| 62 | 14 | M5: Godišnji izveštaj | milestone | 0d | 2022-05-03 | 2022-05-03 | 18 | 250.88d |  |  |  |  |
| 63 | 15 | M6: Finalni izveštaj | milestone | 0d | 2023-04-28 | 2023-04-28 | 47 | 0.38d | 0d |  |  |  |
